# Children's Gourmet Cookbook

Schedule from MS Project, 2012-07-09 to 2012-11-29, costs in $.
Lucerne Publishing

## Calendars

- Standard: Mon-Fri 08:00-12:00, 13:00-17:00; Sat-Sun off.
- Monday-Wednesday: Mon-Wed 08:00-12:00, 13:00-17:00; Thu-Sun off.

## Resources

| Resource |
| --- |
| John Evans |
| Katie Jordan |
| Robin Wood |
| William Flash |
| Carole Poland |
| Printing Service |
| Color Setting Services |
| Copyeditors |

## Schedule

| ID | WBS | Task | Type | Duration | Start | Finish | Predecessors | Total slack | Free slack | Calendar | Resources | Work | Cost |
| --- | --- | --- | --- | --- | --- | --- | --- | --- | --- | --- | --- | --- | --- |
| 1 | 1 | **Acquisition** |  | 25d | 2012-07-09 | 2012-08-10 |  | 0d |  |  |  | 200h |  |
| 2 | 1.1 | Manuscript received | milestone | 0d | 2012-07-09 | 2012-07-09 |  | 0d |  |  | Carole Poland |  |  |
| 3 | 1.2 | Content edit |  | 25d | 2012-07-09 | 2012-08-10 | 2 | 0d |  |  | Carole Poland | 200h |  |
| 4 | 1.3 | Handoff to Editorial | milestone | 0d | 2012-08-10 | 2012-08-10 | 3 | 0d |  |  | Carole Poland |  |  |
| 5 | 2 | **Editorial** |  | 30d | 2012-08-13 | 2012-09-21 | 1 | 0d |  |  |  | 240h |  |
| 6 | 2.1 | Organize manuscript for copyedit |  | 5d | 2012-08-13 | 2012-08-17 |  | 0d |  |  | Robin Wood | 40h |  |
| 7 | 2.2 | Copyedit |  | 20d | 2012-08-20 | 2012-09-14 | 6 | 0d |  |  | Copyeditors | 160h |  |
| 8 | 2.3 | Copyedit incorp |  | 5d | 2012-09-17 | 2012-09-21 | 7 | 0d |  |  | Robin Wood | 40h |  |
| 9 | 2.4 | Handoff to Production | milestone | 0d | 2012-09-21 | 2012-09-21 | 8 | 0d |  |  | Robin Wood |  |  |
| 10 | 3 | **Design and Production** |  | 20d | 2012-08-13 | 2012-09-07 | 5SS | 10d |  |  |  | 320h |  |
| 11 | 3.1 | Cover design |  | 5d | 2012-08-13 | 2012-08-17 |  | 10d | 0d |  | William Flash | 40h |  |
| 12 | 3.2 | Set pages |  | 10d | 2012-08-20 | 2012-08-31 | 11 | 10d | 0d |  | Robin Wood; Katie Jordan | 160h |  |
| 13 | 3.3 | Interior illustration design |  | 15d | 2012-08-20 | 2012-09-07 | 12SS | 10d |  |  | William Flash | 120h |  |
| 14 | 4 | **Pages review** |  | 20d | 2012-09-24 | 2012-10-19 | 10, 5 | 0d |  |  |  | 280h |  |
| 15 | 4.1 | Proofread and index |  | 10d | 2012-09-24 | 2012-10-05 |  | 0d |  |  | John Evans; Katie Jordan | 160h |  |
| 16 | 4.2 | Incorporate 1st Pages review |  | 5d | 2012-10-08 | 2012-10-12 | 15 | 0d |  |  | Carole Poland | 40h |  |
| 17 | 4.3 | Send proofed pages to Production | milestone | 0d | 2012-10-12 | 2012-10-12 | 16 | 0d |  |  | Robin Wood |  |  |
| 18 | 4.4 | Enter page corrections and index |  | 5d | 2012-10-15 | 2012-10-19 | 17 | 0d |  |  | Katie Jordan; Robin Wood | 80h |  |
| 19 | 5 | **Color prep and printing** |  | 29d | 2012-10-22 | 2012-11-29 | 14 | 0d |  |  |  | 208h | 5,000 |
| 20 | 5.1 | Send to color house |  | 1d | 2012-10-22 | 2012-10-22 |  | 0d |  | Monday-Wednesday | Carole Poland | 8h |  |
| 21 | 5.2 | Generate proofs |  | 5d | 2012-10-23 | 2012-10-29 | 20 | 0d |  |  | Color Setting Services | 40h | 5,000 |
| 22 | 5.3 | Print and ship |  | 20d | 2012-11-02 | 2012-11-29 | 21FS+3d | 0d |  |  | Printing Service | 160h |  |
